# 1200V,140mΩ

Schedule from a web Gantt chart, 2024-07-16 to 2026-04-24.
Every day is a working day

## Schedule

| ID | WBS | Task | Duration | Start | Finish | Predecessors | Complete | Status |
| --- | --- | --- | --- | --- | --- | --- | --- | --- |
| 2 | 1 | Kick off | 6d | 2024-07-16 | 2024-07-21 |  | 100% | done |
| 3 | 2 | Design & Layout | 17d | 2024-07-22 | 2024-08-07 |  | 100% | done |
| 4 | 3 | FT 调试 | 315d | 2024-10-09 | 2025-08-19 |  | 100% | done |
| 5 | 4 | **Pre-Qual** | 80d | 2025-08-20 | 2025-11-07 |  | 100% | done |
| 6 | 4.1 | RE168H | 9d | 2025-08-20 | 2025-08-28 |  | 100% | done |
| 7 | 4.2 | RE504H | 20d | 2025-08-28 | 2025-09-16 |  | 100% | done |
| 8 | 4.3 | RE1008H | 53d | 2025-09-16 | 2025-11-07 |  | 100% | done |
| 9 | 5 | **RSA** | 42d | 2025-12-01 | 2026-01-11 |  |  |  |
| 10 | 5.1 | RE验证(补做3lots) | 42d | 2025-12-01 | 2026-01-11 |  |  |  |
| 11 | 6 | **Formal Qual(3lots)** | 139d | 2025-11-10 | 2026-03-28 |  | 4% |  |
| 12 | 6.1 | Fab Process & F/O | 36d | 2025-11-10 | 2025-12-15 |  | 19% |  |
| 13 | 6.2 | PKG & FT | 45d | 2025-12-01 | 2026-01-14 |  |  | waiting |
| 14 | 6.3 | **RE验证** | 69d | 2026-01-19 | 2026-03-28 |  |  | waiting |
| 15 | 6.3.1 | RE168H | 12d | 2026-01-19 | 2026-01-30 |  |  | waiting |
| 16 | 6.3.2 | RE504H | 24d | 2026-02-01 | 2026-02-24 |  |  | waiting |
| 17 | 6.3.3 | RE1008H | 33d | 2026-02-24 | 2026-03-28 |  |  | waiting |
| 18 | 6.4 | AE验证 | 14d | 2026-01-15 | 2026-01-28 | 13 |  | waiting |
| 19 | 6.5 | Bench test | 14d | 2026-02-01 | 2026-02-14 | 15 |  | waiting |
| 20 | 7 | RTP | 1d | 2026-04-24 | 2026-04-24 |  |  | waiting |
